# Модуль интеллектуального шумоподавления для системы видеоконференций

Schedule from ProjectLibre, 2022-09-01 to 2024-04-29.

## Calendars

- Шестидневка: Mon-Sat 08:00-12:00, 13:00-17:00; Sun off. Exceptions (off unless hours are given): 2022-11-04, 2023-01-01 to 2023-01-08, 2023-02-23 to 2023-02-24, 2023-03-08, 2023-05-01, 2023-05-08 to 2023-05-09, 2023-06-12, 2023-11-04, 2024-01-01 to 2024-01-08, 2024-02-23, 2024-03-08.

## Resources

| Resource | Group | Rate |
| --- | --- | --- |
| Не назначено |  |  |
| Ведущий разработчик | Работники |  |
| Научный руководитель | Работники |  |
| Компьютер | Оборудование | 1 |
| Микрофон | Оборудование |  |
| Наушники | Оборудование |  |

## Schedule

| ID | WBS | Task | Duration | Start | Finish | Predecessors | Complete | Baseline start | Baseline finish | Constraint | Resources |
| --- | --- | --- | --- | --- | --- | --- | --- | --- | --- | --- | --- |
| 1 | 1 | **Разработка модуля интеллектуального шумоподавления** | 424d | 2022-10-01 | 2024-03-05 |  | 9% | 2022-10-01 | 2024-02-08 | start no earlier than 2022-09-01 |  |
| 2 | 1.1 | **Разработка гибридной методики шумоподавления** | 33d | 2022-10-01 | 2022-11-09 |  | 100% | 2022-10-01 | 2022-11-09 | start no earlier than 2022-09-01 |  |
| 3 | 1.1.1 | Проанализировать процесс шумоподавления в реальном времени | 14d | 2022-10-01 | 2022-10-17 |  | 100% | 2022-10-01 | 2022-10-17 | start no earlier than 2022-10-01 | Ведущий разработчик; Компьютер |
| 4 | 1.1.2 | Изучить существующие методы шумоподавления | 7d | 2022-10-18 | 2022-10-25 | 3 | 100% | 2022-10-18 | 2022-10-25 | start no earlier than 2022-09-12 | Ведущий разработчик; Компьютер |
| 5 | 1.1.3 | Изучить методы представления спектра аудиосигнала в виде массива амплитудно-частостных характеристик | 3d | 2022-10-26 | 2022-10-28 | 4 | 100% | 2022-10-26 | 2022-10-28 |  | Ведущий разработчик; Компьютер |
| 6 | 1.1.4 | Составить упрощенный алгоритм шумоподавления | 5d | 2022-10-29 | 2022-11-03 | 5 | 100% | 2022-10-29 | 2022-11-03 |  | Ведущий разработчик; Компьютер |
| 7 | 1.1.5 | Предложить механизм корректировки правил и параметров алгоритма шумоподавления | 4d | 2022-11-05 | 2022-11-09 | 6 | 100% | 2022-11-05 | 2022-11-09 |  | Ведущий разработчик; Компьютер |
| 8 | 1.2 | **Разработка программного обеспечения, реализующего гибридную методику шумоподавления** | 326d | 2023-02-01 | 2024-03-05 | 2 |  | 2023-02-01 | 2024-02-08 |  |  |
| 9 | 1.2.1 | **Разработка модели РНС** | 256d | 2023-02-01 | 2023-12-05 |  |  | 2023-02-01 | 2023-11-15 |  |  |
| 10 | 1.2.1.1 | Детализировать структуру (количество и типы узлов) нейронной сети | 90d | 2023-02-01 | 2023-05-23 |  |  | 2023-02-01 | 2023-05-23 | start no earlier than 2023-02-01 | Ведущий разработчик; Компьютер |
| 11 | 1.2.1.2 | Определить формат входных и выходных данных | 21d | 2023-05-24 | 2023-06-17 | 10 |  | 2023-05-24 | 2023-06-08 |  | Ведущий разработчик; Компьютер |
| 12 | 1.2.1.3 | Программная реализация модели РНС | 145d | 2023-06-19 | 2023-12-05 | 11 |  | 2023-06-09 | 2023-11-15 | start no earlier than 1970-01-01 | Ведущий разработчик; Компьютер |
| 13 | 1.2.2 | Обучение модели РНС на большом объеме данных | 23d | 2023-12-06 | 2024-01-09 | 9 |  | 2023-11-16 | 2023-12-09 | start no earlier than 1970-01-01 | Ведущий разработчик; Компьютер; Микрофон; Наушники |
| 14 | 1.2.3 | Корректировка модели РНС | 47d | 2024-01-10 | 2024-03-05 | 13 |  | 2023-12-11 | 2024-02-08 | start no earlier than 1970-01-01 | Ведущий разработчик; Компьютер |
| 15 | 2 | **Внедрение модуля в систему видеоконференций** | 45d | 2024-03-06 | 2024-04-27 | 1 |  | 2024-02-09 | 2024-04-03 |  |  |
| 16 | 2.1 | Реализовать передачу системой входных данных в модуль и получение выходных данных из модуля | 15d | 2024-03-06 | 2024-03-23 |  |  | 2024-02-09 | 2024-02-27 | start no earlier than 1970-01-01 | Ведущий разработчик; Компьютер |
| 17 | 2.2 | **Тестирование эффективности модуля** | 30d | 2024-03-25 | 2024-04-27 | 16 |  | 2024-02-28 | 2024-04-03 |  |  |
| 18 | 2.2.1 | Протестировать с помощью метода экспертных оценок (MOS) | 15d | 2024-03-25 | 2024-04-10 |  |  | 2024-02-28 | 2024-03-16 | start no earlier than 1970-01-01 | Ведущий разработчик; Компьютер; Микрофон; Наушники |
| 19 | 2.2.2 | Протестировать с помощью метода объективной оценки качества речевого сигнала (PESQ) | 15d | 2024-04-11 | 2024-04-27 | 18 |  | 2024-03-18 | 2024-04-03 | start no earlier than 1970-01-01 | Ведущий разработчик; Компьютер; Микрофон; Наушники |
| 20 | 3 | **Занятие научно-исследовательской деятельностью** | 496d | 2022-09-01 | 2024-04-29 |  | 27% | 2022-09-01 | 2024-04-29 |  |  |
| 21 | 3.1 | **Написание магистерской работы (пояснительная записка)** | 496d | 2022-09-01 | 2024-04-29 |  | 21% | 2022-09-01 | 2024-04-29 |  |  |
| 22 | 3.1.1 | Анализ и описание предметной области | 90d | 2022-09-01 | 2022-12-15 |  | 70% | 2022-09-01 | 2022-12-15 |  | Ведущий разработчик; Компьютер |
| 23 | 3.1.2 | Составление структуры (содержание) диссертации | 24.97d | 2022-11-12 | 2022-12-10 |  | 100% | 2022-11-12 | 2022-12-10 | start no earlier than 2022-11-12 | Ведущий разработчик; Компьютер; Научный руководитель |
| 24 | 3.1.3 | Исследование и проектирование решения | 103d | 2023-02-01 | 2023-06-07 | 22 | 15% | 2023-02-01 | 2023-06-07 | start no earlier than 2023-02-01 | Ведущий разработчик; Компьютер |
| 25 | 3.1.4 | Описание третьей главы - "Разработка" | 185d | 2023-06-08 | 2024-01-19 | 24 |  | 2023-06-08 | 2024-01-19 | start no earlier than 2023-06-01 | Ведущий разработчик; Компьютер |
| 26 | 3.1.5 | Описание результатов исследования | 42d | 2024-01-22 | 2024-03-13 | 25 |  | 2024-01-22 | 2024-03-13 | start no earlier than 2024-01-22 | Ведущий разработчик; Компьютер |
| 27 | 3.1.6 | Оформление работы | 40d | 2024-03-14 | 2024-04-29 | 26, 23 |  | 2024-03-14 | 2024-04-29 | start no earlier than 2024-03-14 | Ведущий разработчик; Компьютер; Научный руководитель |

| ID | WBS | Task | Duration | Start | Finish | Predecessors | Complete | Baseline start | Baseline finish | Constraint | Resources |
| --- | --- | --- | --- | --- | --- | --- | --- | --- | --- | --- | --- |
| 28 | 3.2 | **Написание научной статьи** | 50d | 2022-10-01 | 2022-11-29 |  | 100% | 2022-10-01 | 2022-11-29 |  |  |
| 29 | 3.2.1 | Прочитать научную литературу | 10d | 2022-10-01 | 2022-10-12 |  | 100% | 2022-10-01 | 2022-10-12 | start no earlier than 2022-10-01 | Ведущий разработчик; Компьютер |
| 30 | 3.2.2 | Составить список источников | 4d | 2022-10-24 | 2022-10-27 | 29 | 100% | 2022-10-24 | 2022-10-27 | start no earlier than 2022-10-23 | Ведущий разработчик; Компьютер |
| 31 | 3.2.3 | Определить проблему, сформулировать начную новизну | 5d | 2022-11-02 | 2022-11-08 | 30 | 100% | 2022-11-02 | 2022-11-08 | start no earlier than 2022-11-02 | Ведущий разработчик; Компьютер; Научный руководитель |
| 32 | 3.2.4 | Написать в основной части статьи предлагаемое решение проблемы | 10d | 2022-11-09 | 2022-11-19 | 31 | 100% | 2022-11-09 | 2022-11-19 |  | Ведущий разработчик; Компьютер |
| 33 | 3.2.5 | Написать введение, заключение и составить аннотацию к статье | 8d | 2022-11-21 | 2022-11-29 | 32 | 100% | 2022-11-21 | 2022-11-29 |  | Ведущий разработчик; Компьютер |
